# OD-'295-07-13-R8 20-02-2015

Schedule from MS Project, 2014-01-13 to 2015-02-26, status date 2015-02-19, 11 hours a day, costs in $, A marks actual dates.
Luffi

## Calendars

- Estándar: Mon-Thu 06:30-12:00, 13:30-18:00; Fri 06:30-12:00, 13:30-16:00; Sat-Sun off.

## Resources

| Resource | Rate |
| --- | --- |
| Director | 63850 |
| Ingeniero tipo 4 | 49606 |
| Ingeniero tipo 3 | 40745 |
| Dibujante tipo 3 | 28701 |
| Document control | 19666 |
| Dibujante tipo 3 (2) | 28701 |
| Ingeniero tipo 4(2) | 49606 |
| Ingeniero tipo 3 (2) | 40745 |

## Schedule

| ID | WBS | Task | Type | Duration | Start | Finish | Predecessors | Complete | Remaining | Baseline start | Baseline finish | Baseline duration | Total slack | Constraint | Resources | Work | Actual work | Cost | Baseline cost | Actual cost |
| --- | --- | --- | --- | --- | --- | --- | --- | --- | --- | --- | --- | --- | --- | --- | --- | --- | --- | --- | --- | --- |
| 1 | 1 | **CRONOGRAMA DISEÑO ELÉCTRICO NUEVO SISTEMA LIMPIEZA DE GASES DEL HORNO FC-150** |  | 256.73d | 2014-01-13 A | 2015-02-26 |  | 99% | 3.22d | 2014-01-13 | 2014-07-14 | 113.82d | 0d |  |  | 3214h | 3189h | 104,644,899 | 104,644,899 | 103,746,714 |
| 2 | 1.1 | **Datos de entrada** |  | 0d | 2014-03-06 A | 2014-03-06 A |  | 100% |  | 2014-03-06 | 2014-03-06 | 0d |  |  |  |  |  |  |  |  |
| 3 | 1.1.1 | **Inicio del proyecto** |  | 0d | 2014-03-06 A | 2014-03-06 A |  | 100% |  | 2014-03-06 | 2014-03-06 | 0d |  |  |  |  |  |  |  |  |
| 4 | 1.1.1.1 | Lay-out general que abarque desde la S/E 3A hasta el laboratorio | milestone | 0h | 2014-03-06 A | 2014-03-06 A |  | 100% |  | 2014-03-06 | 2014-03-06 | 0h |  |  |  |  |  |  |  |  |
| 5 | 1.1.1.2 | 3D del proyecto OGS L2 - Indisa | milestone | 0h | 2014-03-06 A | 2014-03-06 A |  | 100% |  | 2014-03-06 | 2014-03-06 | 0h |  |  |  |  |  |  |  |  |
| 6 | 1.1.1.3 | Lay out del proyecto OGS L2 - Indisa | milestone | 0h | 2014-03-06 A | 2014-03-06 A |  | 100% |  | 2014-03-06 | 2014-03-06 | 0h |  |  |  |  |  |  |  |  |
| 7 | 1.1.1.4 | Especificación de los equipos a instalar (Data Sheet) | milestone | 0h | 2014-03-06 A | 2014-03-06 A |  | 100% |  | 2014-03-06 | 2014-03-06 | 0h |  |  |  |  |  |  |  |  |
| 8 | 1.1.1.5 | Lay out final del shelter | milestone | 0h | 2014-03-06 A | 2014-03-06 A |  | 100% |  | 2014-03-06 | 2014-03-06 | 0h |  |  |  |  |  |  |  |  |
| 9 | 1.2 | Inicio del proyecto | milestone | 0h | 2014-01-20 A | 2014-01-20 A | 2 | 100% |  | 2014-01-20 | 2014-01-20 | 0h |  |  |  |  |  |  |  |  |
| 10 | 1.3 | Carnetización |  | 48h | 2014-02-07 A | 2014-02-13 A | 9 | 100% |  | 2014-02-07 | 2014-02-13 | 48h |  |  |  |  |  |  |  |  |
| 11 | 1.4 | **Dirección y control del proyecto** |  | 87.73d | 2014-01-13 A | 2014-06-02 A |  | 100% |  | 2014-01-13 | 2014-06-02 | 87.73d |  |  |  | 70h | 70h | 3,171,810 | 3,171,810 | 3,171,810 |
| 12 | 1.4.1 | **Reunión de seguimiento** |  | 87.73d | 2014-01-13 A | 2014-06-02 A |  | 100% |  | 2014-01-13 | 2014-06-02 | 87.73d |  |  |  | 70h | 70h | 3,171,810 | 3,171,810 | 3,171,810 |
| 13 | 1.4.1.1 | Reunión de seguimiento 1 |  | 1h | 2014-01-13 A | 2014-01-13 A | 9 | 100% |  | 2014-01-13 | 2014-01-13 | 1h |  |  | Director | 1h | 1h | 63,850 | 63,850 | 63,850 |
| 14 | 1.4.1.2 | Reunión de seguimiento 2 |  | 2h | 2014-01-13 A | 2014-01-13 A | 9 | 100% |  | 2014-01-13 | 2014-01-13 | 2h |  |  | Director | 2h | 2h | 127,700 | 127,700 | 127,700 |
| 15 | 1.4.1.3 | Reunión de seguimiento 3 |  | 3h | 2014-01-13 A | 2014-01-13 A | 9 | 100% |  | 2014-01-13 | 2014-01-13 | 3h |  |  | Director | 3h | 3h | 191,550 | 191,550 | 191,550 |
| 16 | 1.4.1.4 | Reunión de seguimiento 4 |  | 2h | 2014-01-13 A | 2014-01-13 A | 9 | 100% |  | 2014-01-13 | 2014-01-13 | 2h |  |  | Director | 2h | 2h | 127,700 | 127,700 | 127,700 |
| 17 | 1.4.1.5 | Reunión de seguimiento 5 |  | 2h | 2014-01-17 A | 2014-01-17 A |  | 100% |  | 2014-01-17 | 2014-01-17 | 2h |  |  | Director | 2h | 2h | 127,700 | 127,700 | 127,700 |
| 18 | 1.4.1.6 | Reunión de seguimiento 6 |  | 2h | 2014-01-24 A | 2014-01-24 A |  | 100% |  | 2014-01-24 | 2014-01-24 | 2h |  |  | Ingeniero tipo 4 | 2h | 2h | 99,212 | 99,212 | 99,212 |
| 19 | 1.4.1.7 | Reunión de seguimiento 7 |  | 2h | 2014-01-31 A | 2014-01-31 A |  | 100% |  | 2014-01-31 | 2014-01-31 | 2h |  |  | Ingeniero tipo 4 | 2h | 2h | 99,212 | 99,212 | 99,212 |
| 20 | 1.4.1.8 | Reunión de seguimiento 8 |  | 2h | 2014-02-07 A | 2014-02-07 A |  | 100% |  | 2014-02-07 | 2014-02-07 | 2h |  |  | Ingeniero tipo 4 | 2h | 2h | 99,212 | 99,212 | 99,212 |
| 21 | 1.4.1.9 | Reunión de seguimiento 9 |  | 2h | 2014-02-21 A | 2014-02-21 A |  | 100% |  | 2014-02-21 | 2014-02-21 | 2h |  |  | Ingeniero tipo 4 | 2h | 2h | 99,212 | 99,212 | 99,212 |
| 22 | 1.4.1.10 | Reunión de seguimiento 10 |  | 2h | 2014-02-28 A | 2014-02-28 A |  | 100% |  | 2014-02-28 | 2014-02-28 | 2h |  |  | Ingeniero tipo 4 | 2h | 2h | 99,212 | 99,212 | 99,212 |
| 23 | 1.4.1.11 | Reunión de seguimiento 11 |  | 2h | 2014-03-07 A | 2014-03-07 A |  | 100% |  | 2014-03-07 | 2014-03-07 | 2h |  |  | Ingeniero tipo 3 (2) [200%] | 4h | 4h | 162,980 | 162,980 | 162,980 |
| 24 | 1.4.1.12 | Reunión de seguimiento 12 |  | 2h | 2014-03-13 A | 2014-03-13 A | 23SF+4d | 100% |  | 2014-03-13 | 2014-03-13 | 2h |  |  | Ingeniero tipo 3 (2) [200%] | 4h | 4h | 162,980 | 162,980 | 162,980 |
| 25 | 1.4.1.13 | Reunión de seguimiento 13 |  | 2h | 2014-03-20 A | 2014-03-20 A | 24SF+4d | 100% |  | 2014-03-20 | 2014-03-20 | 2h |  |  | Ingeniero tipo 3 (2) [200%] | 4h | 4h | 162,980 | 162,980 | 162,980 |
| 26 | 1.4.1.14 | Reunión de seguimiento 14 |  | 2h | 2014-03-27 A | 2014-03-27 A | 25SF+5d | 100% |  | 2014-03-27 | 2014-03-27 | 2h |  |  | Ingeniero tipo 3 (2) [200%] | 4h | 4h | 162,980 | 162,980 | 162,980 |
| 27 | 1.4.1.15 | Reunión de seguimiento 15 |  | 2h | 2014-04-03 A | 2014-04-03 A | 25SF+9d | 100% |  | 2014-04-03 | 2014-04-03 | 2h |  |  | Ingeniero tipo 3 (2) [200%] | 4h | 4h | 162,980 | 162,980 | 162,980 |
| 28 | 1.4.1.16 | Reunión de seguimiento 16 |  | 2h | 2014-04-10 A | 2014-04-10 A | 27SF+5d | 100% |  | 2014-04-10 | 2014-04-10 | 2h |  |  | Ingeniero tipo 3 (2) [200%] | 4h | 4h | 162,980 | 162,980 | 162,980 |
| 29 | 1.4.1.17 | Reunión de seguimiento 17 |  | 2h | 2014-04-17 A | 2014-04-17 A | 28SF+4d | 100% |  | 2014-04-17 | 2014-04-17 | 2h |  |  | Ingeniero tipo 3 (2) [200%] | 4h | 4h | 162,980 | 162,980 | 162,980 |
| 30 | 1.4.1.18 | Reunión de seguimiento 18 |  | 2h | 2014-04-24 A | 2014-04-24 A | 29SF+5d | 100% |  | 2014-04-24 | 2014-04-24 | 2h |  |  | Ingeniero tipo 3 (2) [200%] | 4h | 4h | 162,980 | 162,980 | 162,980 |
| 31 | 1.4.1.19 | Reunión de seguimiento 19 |  | 3h | 2014-05-02 A | 2014-05-02 A | 29SF+9d | 100% |  | 2014-05-02 | 2014-05-02 | 3h |  | start no earlier than 2014-05-01 | Ingeniero tipo 3 (2) [200%] | 6h | 6h | 244,470 | 244,470 | 244,470 |
| 32 | 1.4.1.20 | Reunión de seguimiento 20 |  | 2h | 2014-05-09 A | 2014-05-09 A | 31SF+5d | 100% |  | 2014-05-09 | 2014-05-09 | 2h |  |  | Ingeniero tipo 3 (2) [200%] | 4h | 4h | 162,980 | 162,980 | 162,980 |
| 33 | 1.4.1.21 | Reunión de seguimiento 21 |  | 2h | 2014-05-16 A | 2014-05-16 A | 31SF+9d | 100% |  | 2014-05-16 | 2014-05-16 | 2h |  |  | Ingeniero tipo 3 (2) [200%] | 4h | 4h | 162,980 | 162,980 | 162,980 |
| 34 | 1.4.1.22 | Reunión de seguimiento 22 |  | 2h | 2014-05-23 A | 2014-05-23 A | 33SF+5d | 100% |  | 2014-05-23 | 2014-05-23 | 2h |  |  | Ingeniero tipo 3 (2) | 2h | 2h | 81,490 | 81,490 | 81,490 |
| 35 | 1.4.1.23 | Reunión de seguimiento 23 |  | 2h | 2014-06-02 A | 2014-06-02 A | 34SF+5d | 100% |  | 2014-06-02 | 2014-06-02 | 2h |  |  | Ingeniero tipo 3 (2) | 2h | 2h | 81,490 | 81,490 | 81,490 |

| ID | WBS | Task | Type | Duration | Start | Finish | Predecessors | Complete | Remaining | Baseline start | Baseline finish | Baseline duration | Total slack | Constraint | Resources | Work | Actual work | Cost | Baseline cost | Actual cost |
| --- | --- | --- | --- | --- | --- | --- | --- | --- | --- | --- | --- | --- | --- | --- | --- | --- | --- | --- | --- | --- |
| 36 | 1.5 | **Ingeniería de detalle** |  | 256.73d | 2014-01-13 A | 2015-02-26 |  | 99% | 3.3d | 2014-01-13 | 2014-07-14 | 113.82d | 0d |  |  | 3144h | 3119h | 101,473,089 | 101,473,089 | 100,574,904 |
| 37 | 1.5.1 | Acopio de información |  | 10h | 2014-02-14 A | 2014-07-11 A | 10 | 100% |  | 2014-02-14 | 2014-05-02 | 10h |  |  | Ingeniero tipo 4 | 10h | 10h | 496,060 | 496,060 | 496,060 |
| 38 | 1.5.2 | Elaboración de cronograma |  | 5h | 2014-01-14 A | 2014-01-14 A | 10 | 100% |  | 2014-01-14 | 2014-01-14 | 5h |  |  | Director | 5h | 5h | 319,250 | 319,250 | 319,250 |
| 39 | 1.5.3 | Entrega de cronograma | milestone | 0h | 2014-01-28 A | 2014-01-28 A | 38 | 100% |  | 2014-01-28 | 2014-01-28 | 0h |  |  |  |  |  |  |  |  |
| 40 | 1.5.4 | Levantamientos de campo (Verificación de trazado de rutas de cableados eléctricos existentes) |  | 40h | 2014-01-27 A | 2014-01-30 A | 38 | 100% |  | 2014-01-27 | 2014-01-30 | 40h |  |  | Dibujante tipo 3; Ingeniero tipo 3 | 80h | 80h | 2,777,840 | 2,777,840 | 2,777,840 |
| 41 | 1.5.5 | Levantamiento de campo disponibilidad eléctricas y de control |  | 20h | 2014-03-06 A | 2014-04-16 A | 40FS+45d | 100% |  | 2014-03-06 | 2014-04-16 | 20h |  | start no earlier than 2014-03-06 | Dibujante tipo 3; Ingeniero tipo 3 | 40h | 40h | 1,388,920 | 1,388,920 | 1,388,920 |
| 42 | 1.5.6 | Levantamiento medidas de resistividad del terreno |  | 10h | 2014-02-11 A | 2014-02-12 A | 41 | 100% |  | 2014-02-11 | 2014-02-12 | 10h |  |  | Dibujante tipo 3; Ingeniero tipo 3; Ingeniero tipo 4 | 25h | 25h | 942,490 | 942,490 | 942,490 |
| 43 | 1.5.7 | Generación de premisas de diseño |  | 20h | 2014-03-10 A | 2014-04-10 A | 42FS+19d | 100% |  | 2014-03-10 | 2014-04-10 | 20h |  |  | Ingeniero tipo 4 | 20h | 20h | 992,120 | 992,120 | 992,120 |
| 44 | 1.5.8 | Entrega de premisas de diseño | milestone | 0h | 2014-04-10 A | 2014-04-10 A |  | 100% |  | 2014-04-10 | 2014-04-10 | 0h |  | start no earlier than 2014-04-10 |  |  |  |  |  |  |
| 45 | 1.5.9 | **Antes de ruta de alimentación** |  | 93.27d | 2014-03-12 A | 2014-08-07 A |  | 100% |  | 2014-03-12 | 2014-05-01 | 32.18d |  |  |  |  |  |  |  |  |
| 46 | 1.5.9.1 | Plano servicios enterrados | milestone | 0h | 2014-08-07 A | 2014-08-07 A | 44 | 100% |  | 2014-05-01 | 2014-05-01 | 0h |  | start no earlier than 2014-08-07 |  |  |  |  |  |  |
| 47 | 1.5.9.2 | Planos S/E 3A | milestone | 0h | 2014-03-12 A | 2014-03-12 A | 46 | 100% |  | 2014-03-12 | 2014-03-12 | 0h |  |  |  |  |  |  |  |  |
| 48 | 1.5.9.3 | Rutas de bandeja interiores S/E 3A | milestone | 0h | 2014-03-12 A | 2014-03-12 A | 47 | 100% |  | 2014-03-12 | 2014-03-12 | 0h |  |  |  |  |  |  |  |  |
| 49 | 1.5.9.4 | Rutas de bandeja exteriores S/E 3A | milestone | 0h | 2014-03-12 A | 2014-03-12 A | 48 | 100% |  | 2014-03-12 | 2014-03-12 | 0h |  |  |  |  |  |  |  |  |
| 50 | 1.5.9.5 | Lay out banda CV-160 | milestone | 0h | 2014-03-12 A | 2014-03-12 A | 49 | 100% |  | 2014-03-12 | 2014-03-12 | 0h |  |  |  |  |  |  |  |  |
| 51 | 1.5.9.6 | Plano ubicación pedestales banda CV-160 | milestone | 0h | 2014-03-12 A | 2014-03-12 A | 50 | 100% |  | 2014-03-12 | 2014-03-12 | 0h |  |  |  |  |  |  |  |  |
| 52 | 1.5.10 | **Antes de calculo de malla y apantallamiento** |  | 45.27d | 2014-03-12 A | 2014-05-22 A |  | 100% |  | 2014-03-12 | 2014-05-01 | 32.18d |  |  |  |  |  |  |  |  |
| 53 | 1.5.10.1 | Plano malla a tierra edificio | milestone | 0h | 2014-03-12 A | 2014-03-12 A | 43, 51 | 100% |  | 2014-03-12 | 2014-03-12 | 0h |  |  |  |  |  |  |  |  |
| 54 | 1.5.10.2 | Plano malla a tierra bag house L2 | milestone | 0h | 2014-03-12 A | 2014-03-12 A | 53 | 100% |  | 2014-03-12 | 2014-03-12 | 0h |  |  |  |  |  |  |  |  |
| 55 | 1.5.10.3 | Plano malla a tierra laboratorio | milestone | 0h | 2014-05-22 A | 2014-05-22 A | 54 | 100% |  | 2014-05-01 | 2014-05-01 | 0h |  | start no earlier than 2014-05-22 |  |  |  |  |  |  |
| 56 | 1.5.10.4 | Plano apantallamiento edificio | milestone | 0h | 2014-05-22 A | 2014-05-22 A | 55 | 100% |  | 2014-05-01 | 2014-05-01 | 0h |  | start no earlier than 2014-05-22 |  |  |  |  |  |  |
| 57 | 1.5.10.5 | Plano apantallamiento bag house | milestone | 0h | 2014-05-22 A | 2014-05-22 A | 56 | 100% |  | 2014-05-01 | 2014-05-01 | 0h |  | start no earlier than 2014-05-22 |  |  |  |  |  |  |
| 58 | 1.5.10.6 | Plano apantallamiento laboratorio | milestone | 0h | 2014-05-22 A | 2014-05-22 A | 57 | 100% |  | 2014-05-01 | 2014-05-01 | 0h |  | start no earlier than 2014-05-22 |  |  |  |  |  |  |
| 59 | 1.5.11 | **Diseño** |  | 91.27d | 2014-01-27 A | 2014-06-20 A |  | 100% |  | 2014-01-27 | 2014-05-29 | 77.27d |  |  |  | 676h | 676h | 28,793,021 | 28,793,021 | 28,793,021 |
| 60 | 1.5.11.1 | Revisar de plano de conexionado existentes |  | 10h | 2014-01-27 A | 2014-02-12 A | 43, 58 | 100% |  | 2014-01-27 | 2014-02-12 | 10h |  |  | Ingeniero tipo 4 | 20h | 20h | 992,120 | 992,120 | 992,120 |
| 61 | 1.5.11.2 | Diseño de potencia y control de equipos |  | 60h | 2014-02-12 A | 2014-03-20 A | 60FS+16d, 6, 7 | 100% |  | 2014-02-12 | 2014-03-20 | 60h |  |  | Ingeniero tipo 4; Ingeniero tipo 3 | 80h | 80h | 3,436,820 | 3,436,820 | 3,436,820 |
| 62 | 1.5.11.3 | Entrega de cálculo de regulación | milestone | 0h | 2014-03-20 A | 2014-03-20 A |  | 100% |  | 2014-03-20 | 2014-03-20 | 0h |  | start no earlier than 2014-03-20 |  |  |  |  |  |  |
| 63 | 1.5.11.4 | Diseño de lazos de control instrumentacion |  | 96h | 2014-01-27 A | 2014-03-25 A | 61, 62 | 100% |  | 2014-01-27 | 2014-03-25 | 96h |  |  | Ingeniero tipo 3; Ingeniero tipo 4 | 105h | 105h | 4,499,750 | 4,499,750 | 4,499,750 |
| 64 | 1.5.11.5 | Diseño de rutas de cableado alimentacion |  | 25.93h | 2014-02-10 A | 2014-02-13 A | 63, 4 | 100% |  | 2014-02-10 | 2014-02-13 | 25.93h |  |  | Ingeniero tipo 3; Ingeniero tipo 4 | 35h | 35h | 1,514,685 | 1,514,685 | 1,514,685 |
| 65 | 1.5.11.6 | Diseño de rutas de cableado bag house |  | 71h | 2014-02-10 A | 2014-04-14 A | 64, 5 | 100% |  | 2014-02-10 | 2014-04-14 | 71h |  |  | Ingeniero tipo 3; Ingeniero tipo 4 | 25h | 25h | 1,062,930 | 1,062,930 | 1,062,930 |
| 66 | 1.5.11.7 | Diseño de rutas de cableado spray chamber |  | 20h | 2014-02-12 A | 2014-04-28 A | 65FS+5d, 5 | 100% |  | 2014-02-12 | 2014-04-28 | 20h |  |  | Ingeniero tipo 3; Ingeniero tipo 4 | 30h | 30h | 1,310,960 | 1,310,960 | 1,310,960 |
| 67 | 1.5.11.8 | Diseño de cajas y gabinetes |  | 20h | 2014-05-06 A | 2014-05-16 A | 66FS+5d | 100% |  | 2014-05-06 | 2014-05-08 | 20h |  |  | Ingeniero tipo 3; Ingeniero tipo 4 | 26h | 26h | 1,112,536 | 1,112,536 | 1,112,536 |
| 68 | 1.5.11.9 | Diseño de la red |  | 20h | 2014-04-23 A | 2014-04-30 A | 66 | 100% |  | 2014-04-23 | 2014-04-30 | 20h |  |  | Ingeniero tipo 3; Ingeniero tipo 4 | 30h | 30h | 1,310,960 | 1,310,960 | 1,310,960 |
| 69 | 1.5.11.10 | Diseño de malla de tierra de la subestacion |  | 60h | 2014-03-12 A | 2014-03-24 A | 43 | 100% |  | 2014-03-12 | 2014-03-24 | 60h |  | start no earlier than 2014-03-06 | Ingeniero tipo 3 (2); Ingeniero tipo 4(2) | 65h | 65h | 2,692,730 | 2,692,730 | 2,692,730 |
| 70 | 1.5.11.11 | Diseño de malla de tierra y apantallamiento de bag house |  | 40h | 2014-04-01 A | 2014-04-07 A | 69 | 100% |  | 2014-04-01 | 2014-04-07 | 40h |  | start no earlier than 2014-03-06 | Ingeniero tipo 3 (2); Ingeniero tipo 4(2) | 42h | 42h | 1,729,012 | 1,729,012 | 1,729,012 |
| 71 | 1.5.11.12 | Diseño de malla de tierra y apantallamiento de Spray Chamber |  | 40h | 2014-04-07 A | 2014-04-11 A | 70 | 100% |  | 2014-04-07 | 2014-04-11 | 40h |  | start no earlier than 2014-03-06 | Ingeniero tipo 3 (2); Ingeniero tipo 4(2) | 43h | 43h | 1,778,618 | 1,778,618 | 1,778,618 |
| 72 | 1.5.11.13 | Entrega cálculo de malla a tierra | milestone | 0h | 2014-04-11 A | 2014-04-11 A |  | 100% |  | 2014-04-11 | 2014-04-11 | 0h |  | start no earlier than 2014-04-11 |  |  |  |  |  |  |
| 73 | 1.5.11.14 | Diseño civil cuarto de analizadores |  | 50h | 2014-04-08 A | 2014-06-06 A | 67 | 100% |  | 2014-04-08 | 2014-05-14 | 50h |  |  | Ingeniero tipo 3; Ingeniero tipo 4 | 60h | 60h | 2,533,310 | 2,533,310 | 2,533,310 |
| 74 | 1.5.11.15 | Diseño mecanico para ruteos de tuberia de analizadores |  | 50h | 2014-05-23 A | 2014-06-20 A | 73 | 100% |  | 2014-05-15 | 2014-05-22 | 50h |  |  | Ingeniero tipo 3; Ingeniero tipo 4 | 60h | 60h | 2,533,310 | 2,533,310 | 2,533,310 |
| 75 | 1.5.11.16 | Diseño de iluminacion de bag house |  | 20h | 2014-05-29 A | 2014-06-20 A | 68, 74 | 100% |  | 2014-05-22 | 2014-05-26 | 20h |  |  | Ingeniero tipo 3; Ingeniero tipo 4 | 22h | 22h | 914,112 | 914,112 | 914,112 |
| 76 | 1.5.11.17 | Diseño de iluminacion de spray chamber |  | 96h | 2014-05-07 A | 2014-05-19 A | 75 | 100% |  | 2014-05-26 | 2014-05-29 | 30h |  |  | Ingeniero tipo 3; Ingeniero tipo 4 | 33h | 33h | 1,371,168 | 1,371,168 | 1,371,168 |
| 77 | 1.5.11.18 | Entrega de cálculo de iluminación | milestone | 0h | 2014-05-20 A | 2014-05-20 A |  | 100% |  | 2014-05-29 | 2014-05-29 | 0h |  | start no earlier than 2014-05-20 |  |  |  |  |  |  |

| ID | WBS | Task | Type | Duration | Start | Finish | Predecessors | Complete | Baseline start | Baseline finish | Baseline duration | Constraint | Resources | Work | Actual work | Cost | Baseline cost | Actual cost |
| --- | --- | --- | --- | --- | --- | --- | --- | --- | --- | --- | --- | --- | --- | --- | --- | --- | --- | --- |
| 78 | 1.5.12 | **Elaboracion de planos** |  | 158.88d | 2014-02-17 A | 2014-10-29 A |  | 100% | 2014-02-17 | 2014-07-10 | 90.45d |  |  | 1348h | 1348h | 41,530,818 | 41,530,818 | 41,530,818 |
| 79 | 1.5.12.1 | Planos de potencia y control de equipos |  | 70h | 2014-03-17 A | 2014-09-11 A | 61 | 100% |  | 2014-04-24 |  |  | Dibujante tipo 3 (2); Ingeniero tipo 3; Ingeniero tipo 4 | 76h | 76h | 2,262,401 |  | 2,262,401 |
| 80 | 1.5.12.2 | Entrega de planos Potencia y control | milestone | 0h | 2014-10-01 A | 2014-10-01 A | 79 | 100% | 2014-05-08 | 2014-05-08 | 0h | start no earlier than 2014-09-25 |  |  |  |  |  |  |
| 81 | 1.5.12.3 | Planos de lazos de control e instrumentación Bag House |  | 40h | 2014-04-01 A | 2014-09-11 A | 63 | 100% |  | 2014-04-07 |  |  | Dibujante tipo 3 (2); Ingeniero tipo 3 | 42h | 42h | 1,229,530 |  | 1,229,530 |
| 82 | 1.5.12.4 | Planos de lazos de control e instrumentación Spray Chamber |  | 40h | 2014-02-26 A | 2014-09-11 A | 63SS | 100% |  | 2014-04-08 |  |  | Dibujante tipo 3 (2); Ingeniero tipo 3; Ingeniero tipo 4 | 44h | 44h | 1,319,881 |  | 1,319,881 |
| 83 | 1.5.12.5 | Impactar plano de red |  | 58h | 2014-04-30 A | 2014-07-17 A | 68, 82 | 100% | 2014-04-30 | 2014-05-02 | 20h |  | Dibujante tipo 3; Ingeniero tipo 3; Ingeniero tipo 4 | 32h | 32h | 1,080,682 | 1,080,682 | 1,080,682 |
| 84 | 1.5.12.6 | Entrega planos lazos de control e instrumentación | milestone | 0h | 2014-09-12 A | 2014-09-12 A | 82 | 100% | 2014-05-02 | 2014-05-02 | 0h |  |  |  |  |  |  |  |
| 85 | 1.5.12.7 | Lay out de equipos |  | 50h | 2014-04-07 A | 2014-09-18 A | 65 | 100% | 2014-04-07 | 2014-05-07 | 50h |  | Dibujante tipo 3; Ingeniero tipo 3; Ingeniero tipo 4 | 52h | 52h | 1,525,401 | 1,525,401 | 1,525,401 |
| 86 | 1.5.12.8 | Entrega lay-out de equipos | milestone | 0h | 2014-09-24 A | 2014-09-24 A | 85 | 100% | 2014-05-07 | 2014-05-07 | 0h |  |  |  |  |  |  |  |
| 87 | 1.5.12.9 | Plano de rutas de cableado alimentacion |  | 509h | 2014-02-17 A | 2014-04-30 A | 64, 85 | 100% | 2014-02-17 | 2014-04-30 | 509h | start no earlier than 2014-04-30 | Dibujante tipo 3; Ingeniero tipo 3; Ingeniero tipo 4 | 136h | 136h | 4,104,901 | 4,104,901 | 4,104,901 |
| 88 | 1.5.12.10 | Plano de rutas de cableado bag house |  | 125h | 2014-04-14 A | 2014-10-29 A | 65, 87 | 100% | 2014-04-14 | 2014-05-08 | 70h |  | Dibujante tipo 3; Ingeniero tipo 3; Ingeniero tipo 4 | 95h | 95h | 3,072,000 | 3,072,000 | 3,072,000 |
| 89 | 1.5.12.11 | Entrega de listado de materiales preliminar (con un margen de error del 25%) | milestone | 0h | 2014-04-16 A | 2014-04-16 A | 87SS | 100% | 2014-04-16 | 2014-04-16 | 0h | start no earlier than 2014-04-16 |  |  |  |  |  |  |
| 90 | 1.5.12.12 | Plano de rutas de cableado spray chamber |  | 80h | 2014-04-23 A | 2014-09-18 A | 66 | 100% | 2014-04-23 | 2014-05-12 | 80h |  | Dibujante tipo 3; Ingeniero tipo 3; Ingeniero tipo 4 | 110h | 110h | 3,607,040 | 3,607,040 | 3,607,040 |
| 91 | 1.5.12.13 | Plano cajas y gabinetes para Bag House |  | 102h | 2014-04-22 A | 2014-09-04 A | 67, 90 | 100% | 2014-04-22 | 2014-05-19 | 50h | finish no earlier than 2014-09-04 | Dibujante tipo 3; Ingeniero tipo 3 | 52h | 52h | 1,516,540 | 1,516,540 | 1,516,540 |
| 92 | 1.5.12.14 | Plano cajas y gabinete para Spray Chamber |  | 80h | 2014-06-16 A | 2014-09-05 A | 67, 91 | 100% | 2014-05-19 | 2014-05-29 | 80h |  | Dibujante tipo 3; Ingeniero tipo 3 | 82h | 82h | 2,377,570 | 2,377,570 | 2,377,570 |
| 93 | 1.5.12.15 | Planos de rutas de cableado de red |  | 50h | 2014-06-17 A | 2014-09-18 A | 68, 92 | 100% | 2014-05-30 | 2014-06-06 | 50h |  | Dibujante tipo 3; Ingeniero tipo 3; Ingeniero tipo 4 | 56h | 56h | 1,688,381 | 1,688,381 | 1,688,381 |
| 94 | 1.5.12.16 | Entrega de planos de rutas de cableado | milestone | 0h | 2014-10-01 A | 2014-10-01 A | 93 | 100% | 2014-06-06 | 2014-06-06 | 0h | start no earlier than 2014-10-01 |  |  |  |  |  |  |
| 95 | 1.5.12.17 | Plano de la malla de tierra Bag House |  | 72h | 2014-04-01 A | 2014-04-10 A | 70, 72, 82 | 100% | 2014-04-01 | 2014-04-10 | 72h |  | Dibujante tipo 3 (2); Ingeniero tipo 3; Ingeniero tipo 4 | 55h | 55h | 1,647,636 | 1,647,636 | 1,647,636 |
| 96 | 1.5.12.18 | Plano de la malla de tierra Spray Chamber |  | 78h | 2014-04-01 A | 2014-04-10 A | 71, 95 | 100% | 2014-04-01 | 2014-04-10 | 78h |  | Dibujante tipo 3 (2); Ingeniero tipo 3 | 31h | 31h | 901,775 | 901,775 | 901,775 |
| 97 | 1.5.12.19 | Entrega planos malla a tierra | milestone | 0h | 2014-04-10 A | 2014-04-10 A | 96 | 100% | 2014-04-10 | 2014-04-10 | 0h | start no earlier than 2014-05-01 |  |  |  |  |  |  |
| 98 | 1.5.12.20 | Planos civil cuarto de analizadores |  | 153h | 2014-05-07 A | 2014-09-11 A | 73 | 100% | 2014-05-15 | 2014-05-29 | 100h |  | Dibujante tipo 3; Ingeniero tipo 3; Ingeniero tipo 4 | 115h | 115h | 3,525,580 | 3,525,580 | 3,525,580 |
| 99 | 1.5.12.21 | planos mecanico para ruteos de tuberia de analizadores |  | 122.67h | 2014-07-17 A | 2014-09-11 A | 98, 74 | 100% | 2014-05-29 | 2014-06-13 | 110h |  | Dibujante tipo 3; Ingeniero tipo 3; Ingeniero tipo 4 | 132h | 132h | 4,071,222 | 4,071,222 | 4,071,222 |
| 100 | 1.5.12.22 | Entrega planos cuarto analizadores | milestone | 0h | 2014-09-11 A | 2014-09-11 A | 99 | 100% | 2014-06-13 | 2014-06-13 | 0h |  |  |  |  |  |  |  |
| 101 | 1.5.12.23 | Planos de iluminacion de bag house |  | 30h | 2014-06-25 A | 2014-09-11 A | 91 | 100% | 2014-06-16 | 2014-06-18 | 30h |  | Dibujante tipo 3; Ingeniero tipo 3; Ingeniero tipo 4 | 41h | 41h | 1,318,086 | 1,318,086 | 1,318,086 |
| 102 | 1.5.12.24 | Planos de iluminacion de spray chamber |  | 10.34h | 2014-05-08 A | 2014-07-10 A | 92 | 100% | 2014-06-19 | 2014-06-25 | 40h |  | Dibujante tipo 3; Ingeniero tipo 3; Ingeniero tipo 4 | 51h | 51h | 1,605,096 | 1,605,096 | 1,605,096 |
| 103 | 1.5.12.25 | Planos de servicios generales (tomas 480V y 120v) |  | 30h | 2014-06-16 A | 2014-09-18 A | 102 | 100% | 2014-06-25 | 2014-06-30 | 30h |  | Dibujante tipo 3; Ingeniero tipo 3; Ingeniero tipo 4 | 42h | 42h | 1,367,692 | 1,367,692 | 1,367,692 |
| 104 | 1.5.12.26 | Planos para interconexion de redes y servicios auxiliares (SCADA, PROTECCIONES, DETECCION DE INCENDIO, GAITRONIC) |  | 126h | 2014-07-07 A | 2014-10-01 A | 92 | 100% | 2014-06-30 | 2014-07-10 | 80h | finish no earlier than 2014-10-01 | Dibujante tipo 3; Ingeniero tipo 3; Ingeniero tipo 4 | 104h | 104h | 3,309,404 | 3,309,404 | 3,309,404 |
| 105 | 1.5.12.27 | Entrega planos de servicios | milestone | 0h | 2014-10-01 A | 2014-10-01 A | 104 | 100% | 2014-07-10 | 2014-07-10 | 0h | start no earlier than 2014-09-25 |  |  |  |  |  |  |

| ID | WBS | Task | Type | Duration | Start | Finish | Predecessors | Complete | Remaining | Baseline start | Baseline finish | Baseline duration | Total slack | Constraint | Resources | Work | Actual work | Cost | Baseline cost | Actual cost |
| --- | --- | --- | --- | --- | --- | --- | --- | --- | --- | --- | --- | --- | --- | --- | --- | --- | --- | --- | --- | --- |
| 106 | 1.5.13 | **Entregables** |  | 122.45d | 2014-04-09 A | 2014-10-23 A |  | 100% |  | 2014-04-09 | 2014-07-11 | 58.36d |  |  |  | 120h | 120h | 4,584,860 | 4,584,860 | 4,584,860 |
| 107 | 1.5.13.1 | Especificacion de equipos e instrumentos |  | 46h | 2014-06-27 A | 2014-09-02 A | 108 | 100% |  | 2014-07-10 | 2014-07-11 | 10h |  | finish no earlier than 2014-09-02 | Ingeniero tipo 3; Ingeniero tipo 4 | 15h | 15h | 655,480 | 655,480 | 655,480 |
| 108 | 1.5.13.2 | Elaboración de presupuesto |  | 50h | 2014-04-09 A | 2014-06-13 A | 89 | 100% |  | 2014-04-09 | 2014-05-06 | 50h |  |  | Ingeniero tipo 3; Ingeniero tipo 4 | 60h | 60h | 2,533,310 | 2,533,310 | 2,533,310 |
| 109 | 1.5.13.3 | Elaboración de listados de cables y marquillas |  | 20h | 2014-04-21 A | 2014-05-08 A | 84, 94 | 100% |  | 2014-04-21 | 2014-06-06 | 40h |  |  | Dibujante tipo 3 | 40h | 40h | 1,148,040 | 1,148,040 | 1,148,040 |
| 110 | 1.5.13.4 | Elaboración de informe técnico |  | 5h | 2014-07-30 A | 2014-10-23 A | 93, 89 | 100% |  | 2014-06-06 | 2014-06-06 | 5h |  |  | Ingeniero tipo 4 | 5h | 5h | 248,030 | 248,030 | 248,030 |
| 111 | 1.5.14 | Entrega de documentos | milestone | 0h | 2014-11-13 A | 2014-11-13 A | 110 | 100% |  | 2014-06-06 | 2014-06-06 | 0h |  | start no earlier than 2014-11-13 |  |  |  |  |  |  |
| 112 | 1.5.15 | Asistencia a PHA |  | 10h | 2014-10-16 A | 2014-10-23 A | 110SF | 100% |  | 2014-06-09 | 2014-06-10 | 10h |  | start no earlier than 2014-10-16 | Ingeniero tipo 3; Ingeniero tipo 4 | 20h | 20h | 903,510 | 903,510 | 903,510 |
| 113 | 1.5.16 | Normalización de planos del vendor del bag house |  | 133h | 2014-08-25 A | 2015-02-26 | 112 | 64% | 48h | 2014-06-30 | 2014-07-14 | 100h | 0d |  | Dibujante tipo 3; Ingeniero tipo 3; Dibujante tipo 3 (2) | 200h | 175h | 6,944,600 | 6,944,600 | 6,046,415 |
| 114 | 1.5.17 | Document control |  | 857.14h | 2014-01-13 A | 2014-05-16 A | 9 | 100% |  | 2014-01-13 | 2014-05-16 | 857.14h |  |  | Document control [70%] | 600h | 600h | 11,799,600 | 11,799,600 | 11,799,600 |
| 115 | 1.6 | Cierre del proyecto | milestone | 0h | 2015-02-26 | 2015-02-26 | 113, 111, 109, 107, 99 |  |  | 2014-07-14 | 2014-07-14 | 0h | 0d |  |  |  |  |  |  |  |
| 117 | 2 | **ADICIONALES PROYECTO OGS L2** |  | 195.18d | 2014-01-13 A | 2014-11-20 A |  | 100% |  | 2014-01-13 | 2014-07-21 | 118.36d |  |  |  | 1040h | 1040h | 33,282,050 | 33,425,555 | 33,282,050 |
| 118 | 2.1 | Diseño civil del cuarto del transformador |  | 50h | 2014-05-15 A | 2014-07-28 A | 88 | 100% |  | 2014-05-08 | 2014-05-15 | 50h |  |  | Ingeniero tipo 4; Dibujante tipo 3 | 70h | 70h | 2,427,170 | 2,427,170 | 2,427,170 |
| 119 | 2.2 | Especificación del cableado para el Bag House |  | 50h | 2014-07-03 A | 2014-07-10 A |  | 100% |  | 2014-07-14 | 2014-07-21 | 50h |  |  | Ingeniero tipo 4 | 50h | 50h | 2,480,300 | 2,480,300 | 2,480,300 |
| 120 | 2.3 | Levantamiento ruta de la red ModBus |  | 20h | 2014-04-08 A | 2014-04-09 A |  | 100% |  | 2014-04-08 | 2014-04-09 | 20h |  | start no earlier than 2014-04-08 | Dibujante tipo 3 | 20h | 20h | 574,020 | 574,020 | 574,020 |
| 121 | 2.4 | Diseño del sistema eléctrico del Silo de finos (Inclueye elaboración de planos de rutas de bandeja y racks de cajas) |  | 100h | 2014-05-09 A | 2014-10-16 A | 83, 61 | 100% |  | 2014-05-02 | 2014-05-19 | 100h |  |  | Ingeniero tipo 4(2); Ingeniero tipo 3 (2) | 150h | 150h | 6,554,800 | 6,554,800 | 6,554,800 |
| 122 | 2.5 | Presupuesto preliminar |  | 30h | 2014-04-14 A | 2014-04-16 A |  | 100% |  | 2014-04-14 | 2014-04-16 | 30h |  | start no earlier than 2014-04-14 | Ingeniero tipo 4 | 30h | 30h | 1,488,180 | 1,488,180 | 1,488,180 |
| 123 | 2.6 | Diseño del nuevo trazado de ductos para la nueva ubicación de los compresores |  | 120h | 2014-05-16 A | 2014-09-18 A | 87 | 100% |  | 2014-05-01 | 2014-05-19 | 120h |  |  | Ingeniero tipo 4; Dibujante tipo 3 | 130h | 130h | 3,940,180 | 3,940,180 | 3,940,180 |
| 124 | 2.7 | Ruta de cableado para las bombas de agua |  | 60h | 2014-06-06 A | 2014-10-09 A | 90 | 100% |  | 2014-05-12 | 2014-05-21 | 60h |  |  | Dibujante tipo 3 | 60h | 60h | 1,722,060 | 1,722,060 | 1,722,060 |
| 125 | 2.8 | Diseño civil segundo cuarto analizadores (AMETEK) |  | 80h | 2014-01-13 A | 2014-11-20 A |  | 100% |  | 2014-01-13 | 2014-01-23 | 80h |  |  | Ingeniero tipo 3; Dibujante tipo 3 | 120h | 120h | 3,925,880 | 3,925,880 | 3,925,880 |
| 126 | 2.9 | Solicitud de Tags |  | 40h | 2014-04-21 A | 2014-04-24 A | 81, 82 | 100% |  | 2014-04-21 | 2014-04-24 | 40h |  |  | Dibujante tipo 3 | 40h | 40h | 1,148,040 | 1,148,040 | 1,148,040 |
| 127 | 2.10 | Elaboración de planos P&ID |  | 40h | 2014-05-09 A | 2014-09-11 A | 126 | 100% |  | 2014-04-25 | 2014-05-01 | 40h |  |  | Ingeniero tipo 4; Dibujante tipo 3 | 50h | 50h | 1,644,100 | 1,644,100 | 1,644,100 |
| 128 | 2.11 | Elaboración listado de señales |  | 85h | 2014-04-14 A | 2014-09-11 A | 109 | 100% |  | 2014-04-14 | 2014-06-13 | 80h |  |  | Dibujante tipo 3 | 85h | 85h | 2,439,585 | 2,296,080 | 2,439,585 |
| 129 | 2.12 | Elaboración de planos AF 100 (ruta y plano de red impactado) |  | 35h | 2014-05-14 A | 2014-09-18 A | 108 | 100% |  | 2014-05-06 | 2014-05-09 | 35h |  |  | Dibujante tipo 3 | 35h | 35h | 1,004,535 | 1,004,535 | 1,004,535 |
| 130 | 2.13 | Document control |  | 200h | 2014-05-16 A | 2014-06-16 A | 114 | 100% |  | 2014-05-16 | 2014-06-16 | 200h |  |  | Document control | 200h | 200h | 3,933,200 | 3,933,200 | 3,933,200 |
| 131 | 3 | Cierre del proyecto adiconales | milestone | 0h | 2014-10-30 A | 2014-10-30 A |  | 100% |  |  | 2014-07-21 |  |  | start no earlier than 2014-10-30 |  |  |  |  |  |  |
| 132 | 4 | Tarea 1: Configuración inicial |  | 11h? | 2014-01-13 | 2014-01-14 |  |  |  |  |  |  | 255.73d |  |  |  |  |  |  |  |
| 133 | 5 | Tarea 2: Validación del diseño |  | 11h? | 2014-01-13 | 2014-01-14 |  |  |  |  |  |  | 255.73d |  |  |  |  |  |  |  |
| 134 | 6 | Tarea 3: Revisión de cálculos y parámetros |  | 11h? | 2014-01-13 | 2014-01-14 |  |  |  |  |  |  | 255.73d |  |  |  |  |  |  |  |
| 135 | 7 | Tarea 4: Ejecución de simulaciones |  | 11h? | 2014-01-13 | 2014-01-14 |  |  |  |  |  |  | 255.73d |  |  |  |  |  |  |  |
| 136 | 8 | Tarea 5: Revisión y análisis final |  | 11h? | 2014-01-13 | 2014-01-14 |  |  |  |  |  |  | 255.73d |  |  |  |  |  |  |  |
| 137 | 9 | Tarea 6: Generación del informe ejecutivo |  | 11h? | 2014-01-13 | 2014-01-14 |  |  |  |  |  |  | 255.73d |  |  |  |  |  |  |  |

Notes:
- 113: Se estan esperando actualizaciones por parte del vendor para enviar los planos definitivos de instrumentación.
